# PJ251710

Schedule from GanttProject, 2025-10-21 to 2025-10-24.
Katalyst
Gestor Documental
Holidays every year on 01-01, 01-06, 05-01, 08-15, 10-12, 11-01, 12-06, 12-08, 12-25

## Calendars

- Project calendar: Mon-Fri working; Sat-Sun off.

## Schedule

| ID | WBS | Task | Duration | Start | Finish | Constraint |
| --- | --- | --- | --- | --- | --- | --- |
| 1 | 1 | **[PJ-00] Preparacion De entorno** | 0d | 2025-10-21 | 2025-10-21 | start no earlier than 2025-10-21 |
| 2 | 1.1 | [PJ-0001] Configurar Mono Repo | 1d | 2025-10-21 | 2025-10-21 |  |
| 3 | 1.2 | [PJ-0002] Levantar Contenedores Base | 3d | 2025-10-22 | 2025-10-24 | start no earlier than 2025-10-22 |
